# Fixit.xml

Schedule from MS Project XML, 2026-09-07 to 2026-12-25, costs in $.

## Calendars

- Lider QA (Yvanna Bravo): Mon-Fri 08:00-12:00, 13:00-17:00; Sat-Sun off.

## Resources

| Resource | Rate |
| --- | --- |
| No Asignado |  |
| Project Manager (Genesis Varguillas) | 30 |
| Lider UX/UI (Miguel Rivas) | 25 |
| Dev Backend (Keibel Guilarte) | 40 |
| Dev Mobile | 35 |
| Lider QA (Yvanna Bravo) | 20 |

## Schedule

| ID | WBS | Task | Type | Duration | Start | Finish | Predecessors | Total slack | Free slack | Resources | Work | Cost |
| --- | --- | --- | --- | --- | --- | --- | --- | --- | --- | --- | --- | --- |
| 1 | 1 | **Proyecto Sistema FIxIt** |  | 80d | 2026-09-07 | 2026-12-25 |  | 0d |  |  | 2160h | 70,400 |
| 2 | 1.1 | **Gestion e Iniciacion del Proyecto** |  | 80d | 2026-09-07 | 2026-12-25 |  | 0d |  |  | 360h | 10,200 |
| 3 | 1.1.1 | Elaboracion y Aprobacion del Project Charter, Lean Canvas y WBS |  | 5d | 2026-09-07 | 2026-09-11 |  | 70d | 0d | Project Manager (Genesis Varguillas) [75%]; Lider QA (Yvanna Bravo) | 70h | 1,700 |
| 4 | 1.1.2 | Planes de Gestion de Proyecto, Matriz de Riesgos y Gobernanza |  | 5d | 2026-09-14 | 2026-09-18 | 3 | 70d | 5d | Project Manager (Genesis Varguillas) [75%]; Lider QA (Yvanna Bravo) [50%] | 50h | 1,300 |
| 5 | 1.1.3 | Monitoreo, Control de Sprints y Gestion de Cambios (Sem 1-16) |  | 75d | 2026-09-07 | 2026-12-18 |  | 0d |  | Project Manager (Genesis Varguillas) [25%] | 220h | 6,600 |
| 6 | 1.1.4 | Cierre Administrativo, Lecciones Aprendidas y Transferencia |  | 5d | 2026-12-18 | 2026-12-25 | 5 | 0d |  | Project Manager (Genesis Varguillas) [50%] | 20h | 600 |
| 7 | 1.2 | **Diseno UX/UI y Arquitectura del Sistema** |  | 15d | 2026-09-07 | 2026-09-25 |  | 0d |  |  | 240h | 7,800 |
| 8 | 1.2.1 | nvestigacion de Usuarios, Personas y User Journeys |  | 5d | 2026-09-07 | 2026-09-11 |  | 0d |  | Lider UX/UI (Miguel Rivas) | 40h | 1,000 |
| 9 | 1.2.2 | Wireframes y Prototipos de Alta Fidelidad (3 Apps) |  | 10d | 2026-09-14 | 2026-09-25 | 8 | 0d |  | Lider UX/UI (Miguel Rivas) [50%] | 40h | 1,000 |
| 10 | 1.2.3 | Sistema de Diseno (Design System) y Guia de Estilos |  | 5d | 2026-09-14 | 2026-09-18 | 8 | 5d |  | Lider UX/UI (Miguel Rivas) [50%] | 20h | 500 |
| 11 | 1.2.4 | Arquitectura de Microservicios, BD Cloud y Seguridad |  | 10d | 2026-09-07 | 2026-09-18 |  | 0d |  | Dev Backend (Keibel Guilarte) | 80h | 3,200 |
| 12 | 1.2.5 | Especificacion y Contratos de APIs REST |  | 5d | 2026-09-21 | 2026-09-25 | 11 | 0d |  | Dev Backend (Keibel Guilarte); Lider UX/UI (Miguel Rivas) [50%] | 60h | 2,100 |
| 13 | 1.2.6 | H1 HITO 1: Aprobacion Charter, Arquitectura y Prototipos (Sem 3) | milestone | 0d | 2026-09-25 | 2026-09-25 | 3, 4, 9, 10, 12 | 65d |  |  |  |  |
| 14 | 1.3 | **Backend y Panel de Administracion Web** |  | 20d | 2026-09-28 | 2026-10-23 |  | 0d |  |  | 240h | 8,800 |
| 15 | 1.3.1 | Entornos Cloud, Infraestructura y Pipelines CI/CD |  | 5d | 2026-09-28 | 2026-10-02 | 9, 10, 12 | 0d |  | Dev Backend (Keibel Guilarte) | 40h | 1,600 |
| 16 | 1.3.2 | Microservicio de Autenticacion, Usuarios y Perfiles |  | 10d | 2026-10-05 | 2026-10-16 | 15 | 0d |  | Dev Backend (Keibel Guilarte) [50%] | 40h | 1,600 |
| 17 | 1.3.3 | Microservicio de Cotizacion Dinamica, Matching y Materiales |  | 10d | 2026-10-05 | 2026-10-16 | 15 | 0d |  | Dev Backend (Keibel Guilarte) [50%] | 40h | 1,600 |
| 18 | 1.3.4 | Microservicio de Pagos (PCI-DSS) y Motor de Comisiones |  | 5d | 2026-10-19 | 2026-10-23 | 16, 17 | 0d |  | Dev Backend (Keibel Guilarte) [50%] | 20h | 800 |
| 19 | 1.3.5 | Desarrollo del Panel Backoffice Web |  | 5d | 2026-10-19 | 2026-10-23 | 16 | 0d |  | Dev Backend (Keibel Guilarte) [50%]; Lider UX/UI (Miguel Rivas); Dev Mobile | 100h | 3,200 |
| 20 | 1.3.6 | H2 HITO 2: Infraestructura Backend y Backoffice liberados (Sem 7) | milestone | 0d | 2026-10-23 | 2026-10-23 | 18, 19 | 0d |  |  |  |  |
| 21 | 1.4 | **Desarrollo de Aplicaciones Moviles (iOS/Android)** |  | 50d | 2026-09-07 | 2026-11-13 |  | 30d |  |  | 520h | 18,400 |
| 22 | 1.4.1 | App Movil de Usuario |  | 20d | 2026-09-07 | 2026-10-02 |  | 45d | 0d | Dev Mobile | 157h | 5,495 |
| 23 | 1.4.2 | App Movil de Tecnico |  | 15d | 2026-10-02 | 2026-10-23 | 22 | 45d |  | Dev Mobile | 83h | 2,905 |
| 24 | 1.4.3 | Notificaciones Push, Mapas en Vivo y Mensajeria SMS |  | 10d | 2026-10-26 | 2026-11-06 | 20 | 0d |  | Dev Mobile; Dev Backend (Keibel Guilarte) | 160h | 6,000 |
| 25 | 1.4.4 | Integracion Frontend-Backend de Modulos Criticos |  | 5d | 2026-11-09 | 2026-11-13 | 24 | 0d |  | Dev Mobile; Dev Backend (Keibel Guilarte); Lider UX/UI (Miguel Rivas) | 120h | 4,000 |
| 26 | 1.4.5 | H3 HITO 3: Version Alfa de Apps Moviles (Sem 10) | milestone | 0d | 2026-11-13 | 2026-11-13 | 25 | 0d |  |  |  |  |

| ID | WBS | Task | Type | Duration | Start | Finish | Predecessors | Total slack | Constraint | Resources | Work | Cost |
| --- | --- | --- | --- | --- | --- | --- | --- | --- | --- | --- | --- | --- |
| 27 | 1.5 | **Pruebas, Control de Calidad (QA) y Beta Cerrada** |  | 20d | 2026-11-16 | 2026-12-11 |  | 0d |  |  | 540h | 16,800 |
| 28 | 1.5.1 | Plan Maestro de Pruebas y Automatizacion (>=70%) |  | 5d | 2026-11-16 | 2026-11-20 | 26 | 0d |  | Lider QA (Yvanna Bravo); Dev Backend (Keibel Guilarte); Dev Mobile | 120h | 3,800 |
| 29 | 1.5.2 | Pruebas de Seguridad (PenTesting, PCI-DSS) y Carga |  | 5d | 2026-11-23 | 2026-11-27 | 28 | 5d |  | Lider QA (Yvanna Bravo) [50%]; Dev Backend (Keibel Guilarte) [50%]; Dev Mobile [50%] | 60h | 1,900 |
| 30 | 1.5.3 | Ejecucion y Coordinacion de Beta Cerrada (~300 tecnicos) |  | 10d | 2026-11-23 | 2026-12-04 | 28 | 0d |  | Lider QA (Yvanna Bravo) [50%]; Dev Backend (Keibel Guilarte) [50%]; Dev Mobile [50%]; Lider UX/UI (Miguel Rivas) | 240h | 7,300 |
| 31 | 1.5.4 | Gestion, Priorizacion y Correccion de Defectos Criticos |  | 5d | 2026-12-07 | 2026-12-11 | 29, 30 | 0d |  | Lider QA (Yvanna Bravo); Dev Backend (Keibel Guilarte); Dev Mobile | 120h | 3,800 |
| 32 | 1.5.5 | H4 HITO 4: Seguridad, Rendimiento y Beta certificados (Sem 13) | milestone | 0d | 2026-12-11 | 2026-12-11 | 31 | 0d |  |  |  |  |
| 33 | 1.6 | **Publicacion, Despliegue y Lanzamiento** |  | 10d | 2026-12-14 | 2026-12-25 |  | 0d |  |  | 260h | 8,400 |
| 34 | 1.6.1 | Preparacion de Assets y Publicacion en Stores |  | 5d | 2026-12-14 | 2026-12-18 | 32 | 0d |  | Dev Mobile; Lider UX/UI (Miguel Rivas) | 80h | 2,400 |
| 35 | 1.6.2 | Despliegue en Entorno de Produccion (>=99.5% Uptime) |  | 5d | 2026-12-14 | 2026-12-18 | 32 | 0d |  | Dev Backend (Keibel Guilarte) | 40h | 1,600 |
| 36 | 1.6.3 | Ejecucion de Pruebas UAT y 200 Solicitudes Exitosas |  | 5d | 2026-12-21 | 2026-12-25 | 35 | 0d | start no earlier than 2026-12-21 | Lider QA (Yvanna Bravo); Dev Backend (Keibel Guilarte); Dev Mobile | 120h | 3,800 |
| 37 | 1.6.4 | Go-Live Comercial en Ciudad Piloto y Transferencia a Soporte |  | 5d | 2026-12-21 | 2026-12-25 | 34, 35 | 0d |  | Project Manager (Genesis Varguillas) [50%] | 20h | 600 |
| 38 | 1.6.5 | H5 HITO 5: Aprobacion en App Store y Google Play (Sem 15) | milestone | 0d | 2026-12-18 | 2026-12-18 | 34 | 5d |  |  |  |  |
| 39 | 1.6.6 | H6 HITO 6: Go-Live Comercial en Ciudad Piloto (Sem 16) | milestone | 0d | 2026-12-25 | 2026-12-25 | 36, 37 | 0d |  |  |  |  |
